# Projet GL

Schedule from Planner, 2023-01-03 to 2023-01-26.
Ensimag

## Calendars

- Default: Mon-Fri 09:00-12:30, 14:00-19:30; Sat-Sun 14:00-19:00.

## Resources

| Resource |
| --- |
| Jorge |
| Logan |
| Nils |
| Virgile |
| Vianney |

## Schedule

| ID | WBS | Task | Duration | Start | Finish | Predecessors | Complete | Resources | Work |
| --- | --- | --- | --- | --- | --- | --- | --- | --- | --- |
| 1 | 1 | **Sprint 1: Hello World** |  | 2023-01-03 09:00 | 2023-01-05 19:30 |  | 85% | Jorge; Logan; Nils; Virgile; Vianney | 69h |
| 2 | 1.1 | A. Analyse sujet + code | 0.75d | 2023-01-04 11:00 | 2023-01-04 18:30 | 19 | 100% | Jorge [50%]; Vianney [50%] | 6h |
| 3 | 1.2 | A. Scripts tests lexer | 0.12d | 2023-01-04 18:30 | 2023-01-04 19:30 | 2 | 100% | Vianney | 1h |
| 4 | 1.3 | A. Scripts tests parser | 0.12d | 2023-01-05 09:00 | 2023-01-05 10:00 | 3 | 100% | Vianney | 1h |
| 5 | 1.4 | A. Parser | 1d | 2023-01-05 10:00 | 2023-01-05 19:30 | 4 | 100% | Vianney | 8h |
| 6 | 1.5 | A. Lexer | 0.12d | 2023-01-04 18:30 | 2023-01-04 19:30 | 2 | 100% | Jorge | 1h |
| 7 | 1.6 | A. Décompilation | 1.12d | 2023-01-05 09:00 | 2023-01-05 19:30 | 6 | 100% | Jorge | 9h |
| 8 | 1.7 | B. Analyse du sujet | 1.38d | 2023-01-04 11:00 | 2023-01-05 14:30 | 19 | 100% | Logan [50%]; Nils [50%] | 11h |
| 9 | 1.8 | B. Base de tests | 0.25d | 2023-01-05 14:30 | 2023-01-05 16:30 | 8 | 100% | Logan [50%]; Nils [50%] | 2h |
| 10 | 1.9 | B. Vérification contextuelle | 0.25d | 2023-01-05 16:30 | 2023-01-05 18:30 | 9 | 100% | Logan [50%]; Nils [50%] | 2h |
| 11 | 1.10 | B. Décoration de l'arbre | 0.12d | 2023-01-05 18:30 | 2023-01-05 19:30 | 10 | 100% | Logan [50%]; Nils [50%] | 1h |
| 12 | 1.11 | C. Analyse sujet + code | 1.5d | 2023-01-04 11:00 | 2023-01-05 15:30 | 19 | 100% | Virgile | 12h |
| 13 | 1.12 | C. Parser CLI | 0.25d | 2023-01-05 15:30 | 2023-01-05 17:30 | 12 | 100% | Virgile | 2h |
| 14 | 1.13 | C. Code assembleur | 0.25d | 2023-01-05 17:30 | 2023-01-05 19:30 | 13 | 100% | Virgile | 2h |
| 15 | 1.14 | G. Charte d'équipe | 0.62d | 2023-01-03 09:00 | 2023-01-03 15:30 |  | 100% | Jorge [20%]; Logan [20%]; Nils [20%]; Virgile [20%]; Vianney [20%] | 5h |
| 16 | 1.15 | G. SWOT + fiches indiv | 0.12d | 2023-01-03 15:30 | 2023-01-03 16:30 | 15 | 100% | Jorge [20%]; Logan [20%]; Nils [20%]; Virgile [20%]; Vianney [20%] | 1h |
| 17 | 1.16 | G. Config outils | 0.25d | 2023-01-03 16:30 | 2023-01-03 18:30 | 16 | 100% | Jorge [20%]; Logan [20%]; Nils [20%]; Virgile [20%]; Vianney [20%] | 2h |
| 18 | 1.17 | G. Répartition du travail | 0.25d | 2023-01-03 18:30 | 2023-01-04 10:00 | 17 | 100% | Jorge [20%]; Logan [20%]; Nils [20%]; Virgile [20%]; Vianney [20%] | 2h |
| 19 | 1.18 | G. Planning | 0.12d | 2023-01-04 10:00 | 2023-01-04 11:00 | 18 | 100% | Jorge [20%]; Logan [20%]; Nils [20%]; Virgile [20%]; Vianney [20%] | 1h |
| 20 | 2 | **Sprint 2: Sans objet** |  | 2023-01-06 09:00 | 2023-01-12 15:30 | 1 |  | Jorge; Logan; Nils; Virgile; Vianney | 114h |
| 21 | 2.1 | A. Base de tests | 1.12d | 2023-01-07 15:00 | 2023-01-08 19:00 | 35 |  | Jorge [50%]; Vianney [50%] | 9h |
| 22 | 2.2 | A. Parser | 1.12d | 2023-01-09 09:00 | 2023-01-09 19:30 | 21 |  | Vianney | 9h |
| 23 | 2.3 | A. Decompile | 1.12d | 2023-01-09 09:00 | 2023-01-09 19:30 | 21 |  | Jorge | 9h |
| 24 | 2.4 | B. Analyse sujet | 1.12d | 2023-01-07 15:00 | 2023-01-08 19:00 | 35 |  | Logan [50%]; Nils [50%] | 9h |
| 25 | 2.5 | B. Base de tests | 0.88d | 2023-01-09 09:00 | 2023-01-09 17:30 | 24 |  | Logan [50%]; Nils [50%] | 7h |
| 26 | 2.6 | B. Amélioration scripts tests | 0.5d | 2023-01-09 17:30 | 2023-01-10 11:00 | 25 |  | Logan [50%]; Nils [50%] | 4h |
| 27 | 2.7 | B. Passe 3 | 2.25d | 2023-01-10 11:00 | 2023-01-12 11:00 | 26 |  | Logan [50%]; Nils [50%] | 18h |
| 28 | 2.8 | B. EnvironnementType | 0.38d | 2023-01-12 11:00 | 2023-01-12 15:30 | 27 |  | Logan [50%]; Nils [50%] | 3h |
| 29 | 2.9 | C. Analyse sujet | 1.12d | 2023-01-07 15:00 | 2023-01-08 19:00 | 35 |  | Virgile | 9h |
| 30 | 2.10 | C. Base + script de tests | 1.12d | 2023-01-09 09:00 | 2023-01-09 19:30 | 29 |  | Virgile | 9h |
| 31 | 2.11 | C. Code assembleur | 2.25d | 2023-01-10 09:00 | 2023-01-11 19:30 | 30 |  | Virgile | 18h |
| 32 | 2.12 | G. Préparation suivi 1 | 0.25d | 2023-01-06 09:00 | 2023-01-06 11:00 |  | 100% | Jorge [20%]; Logan [20%]; Nils [20%]; Virgile [20%]; Vianney [20%] | 2h |
| 33 | 2.13 | G. Organisation sprint | 0.25d | 2023-01-06 11:00 | 2023-01-06 14:30 | 32 | 100% | Jorge [20%]; Logan [20%]; Nils [20%]; Virgile [20%]; Vianney [20%] | 2h |
| 34 | 2.14 | G. Spécification extension | 0.38d | 2023-01-06 14:30 | 2023-01-06 17:30 | 33 |  | Jorge [20%]; Logan [20%]; Nils [20%]; Virgile [20%]; Vianney [20%] | 3h |
| 35 | 2.15 | G. Gestion des risques | 0.38d | 2023-01-06 17:30 | 2023-01-07 15:00 | 34 |  | Jorge [20%]; Logan [20%]; Nils [20%]; Virgile [20%]; Vianney [20%] | 3h |

| ID | WBS | Task | Type | Duration | Start | Finish | Predecessors | Constraint | Resources | Work |
| --- | --- | --- | --- | --- | --- | --- | --- | --- | --- | --- |
| 36 | 3 | **Sprint 3: Avec objet** |  |  | 2023-01-12 15:30 | 2023-01-20 14:30 | 20 |  | Jorge; Logan; Nils; Virgile; Vianney | 63h |
| 37 | 3.1 | ... |  | 7.88d | 2023-01-12 15:30 | 2023-01-20 14:30 |  |  |  | 63h |
| 38 | 4 | Rendu version intermédiaire | milestone | 0d | 2023-01-16 09:00 | 2023-01-16 00:00 |  | must start on 2023-01-16 00:00 |  |  |
| 39 | 5 | Rendu Final | milestone | 0d | 2023-01-23 09:00 | 2023-01-23 00:00 |  | must start on 2023-01-23 00:00 |  |  |
| 40 | 6 | Rendu documentation | milestone | 0d | 2023-01-23 09:00 | 2023-01-23 00:00 |  | must start on 2023-01-23 00:00 |  |  |
| 41 | 7 | Rendu Bilan | milestone | 0d | 2023-01-25 09:00 | 2023-01-25 00:00 |  | must start on 2023-01-25 00:00 |  |  |
| 42 | 8 | Soutenance | milestone | 0d | 2023-01-26 09:00 | 2023-01-26 00:00 |  | must start on 2023-01-26 00:00 |  |  |
